# 结构及ID设计

Schedule from a web Gantt chart, 2025-08-27 to 2025-09-03.
Saturdays and Sundays are off

## Schedule

| ID | WBS | Task | Duration | Start | Finish | Predecessors | Status |
| --- | --- | --- | --- | --- | --- | --- | --- |
| 2 | 1 | 外观设计初稿 | 5d | 2025-08-27 | 2025-09-02 |  |  |
| 3 | 2 | 初稿评审 | 1d | 2025-09-03 | 2025-09-03 | 2 | waiting |
